gantt
    title MONET DATABASE REFACTOR
    dateFormat YYYY-MM-DD

    Kickoff! : milestone, kickoff, 2026-01-31, 2m
    
    section API
    Remove view dependencies                            :api1, after kickoff, 1w
    Rewrite endpoints JOIN processedData + Products     :api2, after api1, 1w
    
    section Phase 1 - Sidecar
    Add Activity table                                  :p1a, after kickoff, 0.5w
    Add Entity table                                    :p1b, after kickoff, 0.5w
    Add Protocol table                                  :p1c, after kickoff, 0.5w
    App code - dual-write activities                    :p1d, after p1a, 1w
    App code - create Entity rows for processedData     :p1e, after p1b, 1w
    App code - create Entity rows for samples           :p1f, after p1e, 1w
    
    section Phase 2a - Activities
    Switch activity reads to new table                  :p2a1, after p1d, 0.5w
    Remove 4 old activity tables                        :p2a2, after p2a1, 0.5w
    
    section Phase 2b - Products
    Add value columns directly to products              :p2b1, after api2, 0.5w
    Migrate data from QuantityValue                     :p2b2, after p2b1, 2w
    Remove QuantityValue table                          :p2b3, after p2b2, 0.5w
    Remove LatLonValue table                            :p2b4, after p2b3, 0.25w
    
    section Phase 2c - Metadata EAV
    Design corrected EAV schema                         :p2c1, after p1b, 0.5w
    Build JSON↔EAV Python adapter                       :p2c2, after p2c1, 1w
    Migrate 2 metadata tables                           :p2c3, after p2c2, 1w
    Remove old metadata tables                          :p2c4, after p2c3, 0.25w
    
    section Phase 3 - Agents
    Add Agent/Actor tables                              :p3a, after p2a2, 1w
    Link Agents to Activities                           :p3b, after p3a, 0.5w